How a schedule from an exported table changed from version to version. A marks actual dates.

## Version 1 (saved 2026-10-21)

Note of the change: Add team timeline (Gantt chart, planned vs actual); README

| Task |
| --- |
| Proposal AI declarations submitted |
| Kick-off: design and roles agreed |
| Checkpoint: label tables and round-1 inputs |
| Checkpoint: ML results frozen |
| Checkpoint: full draft review |
| Final report due |
| Individual Q&A |
| Environment, MEF download, 5-minute table |
| Label rules v1 frozen |
| Hourly MEF label tables (A/B/C/C-fwd) |
| Night split, metrics, baselines |
| Full-year 5-minute AEI for Otis |
| Ridge model (validation) |
| Label diagnostics |
| Gradient-boosting model (validation) |
| Forecast file to Oscar |
| Error analysis (validation) |
| Test-set evaluation (run once) |
| 5.3 table and figures to report |
| Report 4.1 (MEF labels), 4.2, 4.3 drafts |
| Price data download and validation |
| AEI and price hourly tables |
| Data dictionary and quality report |
| Push files to data_prep |
| Report 4.1 (AEI and price) draft |
| Scheduler and night slicer |
| Round 1: actual signals, 364 nights |
| Round 2: forecast on test nights (B, C, C-fwd) |
| Report 4.4, figures for 5.1-5.2 |
| Report requirements and outline v1 |
| Review of mechanism note and limitations |
| Outline revised after freeze |
| Sections 1-3, 4.5, 5 integration, 6-7 |
| Full draft review and revision |
| Executive summary, references, AI-use appendix |

## Version 2 (saved 2026-10-21)

Note of the change: Add Otis's data_prep (sent 21 Oct, committed by Kunyu), docs/model_selection.md, timeline update

Added:

| Task |
| --- |
| Files into data_prep |

Removed: Push files to data_prep
